# Rascal Master Schedule

Schedule from GanttProject, 2014-03-06 to 2014-08-01.
Saint Louis University
This schedule lists all of mission milestones associated with the Rascal mission, which is being co-developed with resources from Saint Louis University and the Boeing Company.

## Calendars

- Project calendar: Mon-Sun working.

## Resources

| Resource | Group |
| --- | --- |
| Tom Moline | Primary Spacecraft Program Manager |
| Nate Richard | Secondary Spacecraft Program Manager |
| Jennifer Babb | DCK Lead |
| Tyler Olson | PRP Lead |
| Kate Clements | Primary ADC Co-Lead |
| Nathan Bossart | Primary PLD Lead |
| Joe Mayer |  |
| Christopher Berry |  |
| Alex Howard | Secondary PWR Lead |

## Schedule

| ID | WBS | Task | Type | Duration | Start | Finish | Predecessors | Resources |
| --- | --- | --- | --- | --- | --- | --- | --- | --- |
| 1 | 1 | **Rascal Mission CONOPS** |  | 27d | 2014-03-06 | 2014-04-01 |  | Tom Moline; Nate Richard |
| 2 | 1.1 | Rascal CONOPS Trade Study |  | 15d | 2014-03-06 | 2014-03-20 |  | Tom Moline; Nate Richard |
| 3 | 1.2 | Rascal CONOPS Selection | milestone | 0d | 2014-03-20 | 2014-03-20 |  |  |
| 4 | 1.3 | CONOPS Revision 1 |  | 12d | 2014-03-21 | 2014-04-01 |  |  |
| 5 | 1.4 | Rascal Mission Objective and Success Criterea |  | 12d | 2014-03-21 | 2014-04-01 | 4SS | Tom Moline; Nate Richard |
| 6 | 1.5 | Preliminary Rascal RVM |  | 12d | 2014-03-21 | 2014-04-01 | 4SS | Tom Moline; Nate Richard |
| 7 | 2 | **Primary ADC Subsystem** |  | 16d | 2014-03-17 | 2014-04-01 |  | Tom Moline [75%]; Kate Clements [25%] |
| 8 | 2.1 | Preliminary Relative Orbit Analysis |  | 5d | 2014-03-17 | 2014-03-21 |  | Tom Moline |
| 9 | 2.2 | Preliminary Controls Analysis |  | 4d | 2014-03-22 | 2014-03-25 | 8 | Tom Moline |
| 10 | 2.3 | Preliminary Controls Implementation |  | 7d | 2014-03-26 | 2014-04-01 | 9 |  |
| 11 | 2.4 | Preliminary ADC Sensor Research |  | 12d | 2014-03-21 | 2014-04-01 |  | Kate Clements |
| 12 | 3 | Primary PLD Subsystem |  | 138d | 2014-03-17 | 2014-08-01 |  |  |
| 13 | 4 | **PRP Subsystem** |  | 12d | 2014-03-21 | 2014-04-01 |  |  |
| 14 | 4.1 | Preliminary PRP System Research |  | 12d | 2014-03-21 | 2014-04-01 |  | Tyler Olson |
| 15 | 5 | **Primary CDH Subsystem** |  | 17d | 2014-03-21 | 2014-04-06 |  |  |
| 16 | 5.1 | Review Boeing Colony-II Bus User Guide |  | 5d | 2014-03-21 | 2014-03-25 |  |  |
| 17 | 5.2 | Preliminary Spacecraft Functional Block Diagram |  | 12d | 2014-03-26 | 2014-04-06 | 16 |  |
| 18 | 6 | **DCK Subsystem** |  | 24d | 2014-03-21 | 2014-04-13 |  |  |
| 19 | 6.1 | Define Separation Requirements |  | 12d | 2014-03-21 | 2014-04-01 |  | Tom Moline; Jennifer Babb |
| 20 | 6.2 | Preliminary Docking Mechanism Research |  | 12d | 2014-03-21 | 2014-04-01 |  | Jennifer Babb |
| 21 | 6.3 | Assess Primary Spacecraft Docking Integration |  | 12d | 2014-03-21 | 2014-04-01 | 20SS |  |
| 22 | 6.4 | Preliminary Methodology Trade Study |  | 12d | 2014-04-02 | 2014-04-13 | 20 |  |
| 23 | 7 | **Secondary STR Subsystem** |  | 12d | 2014-03-21 | 2014-04-01 |  |  |
| 24 | 7.1 | Review Previous Skeleton Design Work |  | 5d | 2014-03-21 | 2014-03-25 |  | Christopher Berry |
| 25 | 7.2 | Preliminary Mass Budget |  | 8d | 2014-03-25 | 2014-04-01 |  | Christopher Berry |
| 26 | 7.3 | Preliminary Component Listing |  | 12d | 2014-03-21 | 2014-04-01 |  |  |

Notes:
- 1: All tasks realted to defining mission requirements, goals, architecture, etc.
- 2: Trade study comparing missions with and without docking
- 3: Final day to decide which CONOPS to pursue
- 4: First revision of CONOPS with docking.
- 5: Determine success criterea for mission execution, as defined by CONOPS and mission objective.
- 6: Requirments Verification Matrix for Boeing delivery
- 7: Primary ADC Tasks for the Rascal EDU Work
- 8: First principles and trend analysis for relative motion betwee two spacecraft
- 9: Analyzing ideal oribt path for docking mission type, as to determine the affect of sensor noise, pertubatoins, etc.
- 10: Implementing controls analysis into Matlab for testing and simulation
- 11: Figure out what is necessary/available for determining local spacecraft orientation/inertial position.
- 12: All tasks associated with the PLD subsystem for work on Rascal EDU
- 13: All tasks associated with thePRP subsystem for work on Rascal EDU
- 14: Figuring out the coordinate system terminology that is to be incorperated into the design, picking volume constraints, defining system performance characteristics, etc.
- 15: All tasks associated with the primary CDH subsystem for work on Rascal EDU
- 16: Look-over the user's guide provided by Boeing, as to determine the communication protocal being used between SLU and Colony-II, as well as the type of sensor information being passed between each.
- 17: Determine functional block diagram for interface between each portion of SLU and Boeing side of primary spacecraft.
- 18: All tasks associated with the DCK subsystem for work on Rascal EDU
- 19: Important in determining which designs are feasible. Will result from analysis being done by ADC team.
- 20: Reveiw docking mechanism heritage and determine whether or not it is necessary to have separate dockin/initial separation mechanisms.
- 21: Determine orientation of the Colony-II bus and the feasibility of integrating dockin components into its system.
- 22: Based on research, determine best method of pursuing docking.
- 23: All tasks associated with the Secondary STR subsystem for work on Rascal EDU
- 24: Look over previous skeletion design work (As done by Christopher Berry), and determine what needs to be done going forward with its design.
- 25: Preliminary mass budget that allocates, as percentage of total spacecraft mass, subsystem mass properties.
- 26: Determine components necessary to integrate all s/c components.

| ID | WBS | Task | Type | Duration | Start | Finish | Predecessors | Resources |
| --- | --- | --- | --- | --- | --- | --- | --- | --- |
| 27 | 8 | **Secondary COM Subsystem** |  | 12d | 2014-03-21 | 2014-04-01 |  |  |
| 28 | 8.1 | Secondary Link Budget Analysis |  | 5d | 2014-03-21 | 2014-03-25 |  |  |
| 29 | 8.2 | Preliminary Component Research |  | 12d | 2014-03-21 | 2014-04-01 |  |  |
| 30 | 9 | **Secondary PWR Subsystem** |  | 26d | 2014-03-21 | 2014-04-15 |  |  |
| 31 | 9.1 | Secondary Power Budget |  | 12d | 2014-03-21 | 2014-04-01 |  | Alex Howard |
| 32 | 9.2 | Preliminary Component Selection |  | 14d | 2014-04-02 | 2014-04-15 | 31 |  |
| 33 | 10 | **Secondary ADC Subsystem** |  | 33d | 2014-03-21 | 2014-04-22 |  |  |
| 34 | 10.1 | Preliminary Detumbling Analysis |  | 19d | 2014-03-21 | 2014-04-08 |  |  |
| 35 | 10.2 | Preliminary Detumbling Requirements |  | 7d | 2014-04-09 | 2014-04-15 | 34 |  |
| 36 | 10.3 | Preliminary Detumbling Component Selection |  | 14d | 2014-04-09 | 2014-04-22 | 34 |  |
| 37 | 10.4 | Determine GPS Frequency |  | 5d | 2014-03-21 | 2014-03-25 |  |  |
| 38 | 11 | **Secondary CDH Subsystem** |  | 24d | 2014-03-21 | 2014-04-13 |  |  |
| 39 | 11.1 | Preliminary Spacecraft Functional Block Diagram |  | 12d | 2014-03-21 | 2014-04-01 |  |  |
| 40 | 11.2 | Preliminary Software System Overview |  | 12d | 2014-04-02 | 2014-04-13 | 39 |  |
| 41 | 12 | Student Graduation | milestone | 0d | 2014-05-15 | 2014-05-15 |  |  |
| 42 | 13 | EDU Delivery | milestone | 0d | 2014-08-01 | 2014-08-01 |  |  |

Notes:
- 27: All tasks associated with the Secondary COM subsystem for work on Rascal EDU
- 28: Cointinue assessing link budget, as to determine feasibility of inter-satellite communication.
- 29: Research the components necessary to acheive mission goals (inter-satellite communication and ground downlink capabilities).
- 30: All tasks associated with the Secondary PWR subsystem for work on Rascal EDU
- 31: Based on preliminary power budget work, begin determining max lifetime based on realistic battery and EPS figures, as well as on estimates of power consumption of the rest of the spacecraft.
- 32: Based on power requirements dictated by the power budget, determine the type and number of batteries necessary to execute the mission, as well as what's necessary to integrate said batteries into the design.
- 33: All tasks associated with the Secondary STR subsystem for work on Rascal EDU
- 34: Review work that was done for COPPER and Argus and determine how to implement said analysis for the secondary spacecraft and its tumbling mitigation.
- 36: Based on detumbling requirements, determine components necessary to acheive said requirements.
- 37: Based on accuracy information and necessary data.
- 38: All tasks associated with the Secondary CDH subsystem for work on Rascal EDU
- 39: Determine the subsystems necessary to execute mission goals, as well as the manner in which each subsystem interacts with the other.
- 40: Analyze previous software development for COPPER and Argus and determine what can be brought in for Rascal work and what needs to be added/taken away.
